# digitalmayor

Schedule from MS Project, 2016-08-08 to 2016-12-16.

## Calendars

- 표준: Mon-Fri 08:00-12:00, 13:00-17:00; Sat-Sun off.

## Schedule

| ID | WBS | Task | Type | Duration | Start | Finish |
| --- | --- | --- | --- | --- | --- | --- |
| 1 | 1 | **사업관리** |  | 1d | 2016-08-12 | 2016-08-12 |
| 2 | 1.1 | **착수보고회** |  | 1d | 2016-08-12 | 2016-08-12 |
| 3 | 1.1.1 | 착수보고자료 | manual | 5d | 2016-08-08 | 2016-08-12 |
| 4 | 1.1.2 | 착수보고회 | manual | 1d | 2016-08-18 | 2016-08-18 |
| 5 | 1.2 | **보고** |  | 1d | 2016-08-12 | 2016-08-12 |
| 6 | 1.2.1 | 1주차보고 | milestone, manual | 0d | 2016-08-19 | 2016-08-19 |
| 7 | 1.2.2 | 2주차보고 | manual | 1d | 2016-08-26 | 2016-08-26 |
| 8 | 1.2.3 | 3주차보고 | manual | 1d | 2016-09-02 | 2016-09-02 |
| 9 | 1.2.4 | M월간보고 | milestone, manual | 0d | 2016-09-05 | 2016-09-05 |
| 10 | 1.2.5 | 4주차보고 | manual | 1d | 2016-09-09 | 2016-09-09 |
| 11 | 1.2.6 | 5주차보고 | manual | 1d | 2016-09-16 | 2016-09-16 |
| 12 | 1.2.7 | 6주차보고 | manual | 1d | 2016-09-23 | 2016-09-23 |
| 13 | 1.2.8 | 7주차보고 | manual | 1d | 2016-09-30 | 2016-09-30 |
| 14 | 1.2.9 | M+1월간보고 | milestone, manual | 0d | 2016-10-03 | 2016-10-03 |
| 15 | 1.2.10 | 8주차보고 | manual | 1d | 2016-10-07 | 2016-10-07 |
| 16 | 1.2.11 | 9주차보고 | manual | 1d | 2016-10-14 | 2016-10-14 |
| 17 | 1.2.12 | 10주차보고 | manual | 1d | 2016-10-21 | 2016-10-21 |
| 18 | 1.2.13 | 11주차보고 | manual | 1d | 2016-10-28 | 2016-10-28 |
| 19 | 1.2.14 | M+2월간보고 | milestone, manual | 0d | 2016-10-31 | 2016-10-31 |
| 20 | 1.2.15 | 12주차보고 | manual | 1d | 2016-11-04 | 2016-11-04 |
| 21 | 1.2.16 | 13주차보고 | manual | 1d | 2016-11-11 | 2016-11-11 |
| 22 | 1.2.17 | 14주차보고 | manual | 1d | 2016-11-18 | 2016-11-18 |
| 23 | 1.2.18 | 15주차보고 | manual | 1d | 2016-11-25 | 2016-11-25 |
| 24 | 1.2.19 | M+3월간보고 | milestone, manual | 0d | 2016-11-28 | 2016-11-28 |
| 25 | 1.2.20 | 16주차보고 | manual | 1d | 2016-12-02 | 2016-12-02 |
| 26 | 1.2.21 | 17주차보고 | manual | 1d | 2016-12-09 | 2016-12-09 |
| 27 | 1.2.22 | 최종보고 | milestone, manual | 0d | 2016-12-16 | 2016-12-16 |

| ID | WBS | Task | Type | Duration | Start | Finish | Constraint |
| --- | --- | --- | --- | --- | --- | --- | --- |
| 28 | 2 | **품질관리** |  | 1d | 2016-08-12 | 2016-08-12 |  |
| 29 | 2.1 | 품질관리계획수립 | manual | 8d | 2016-08-22 | 2016-08-31 |  |
| 30 | 2.2 | 1차품질점검 | manual | 5d | 2016-10-31 | 2016-11-04 |  |
| 31 | 2.3 | 2차품질점검 | manual | 10d | 2016-12-05 | 2016-12-16 |  |
| 32 | 2.4 | 기능시험 | manual | 5d | 2016-11-28 | 2016-12-02 |  |
| 33 | 2.5 | 통합시험 | manual | 5d | 2016-12-05 | 2016-12-09 |  |
| 34 | 3 | **시정 및 도시현황 데이터 기초조사 결과 분석** |  | 1d | 2016-08-12 | 2016-08-12 |  |
| 35 | 3.1 | 주요시책 사업 관련 데이터 현황 파악 및 관리 방안 도출 | manual | 17d | 2016-08-18 | 2016-09-09 | start no earlier than 2016-08-18 |
| 36 | 3.2 | 실시간 도시현황 데이터 현황 파악 및 관리 방안 도출 | manual | 17d | 2016-08-18 | 2016-09-09 | start no earlier than 2016-08-18 |
| 37 | 3.3 | 디지털 여론동향 데이터 현황 파악 및 관리 방안 도출 | manual | 17d | 2016-08-18 | 2016-09-09 | start no earlier than 2016-08-18 |
| 38 | 3.4 | 안전통합센터 CCTV 사고 모니터링 데이터 현황 파악 | manual | 17d | 2016-08-18 | 2016-09-09 | start no earlier than 2016-08-18 |
| 39 | 4 | **데이터 수집 및 현행화 관리방안 수립** |  | 1d | 2016-08-12 | 2016-08-12 |  |
| 40 | 4.1 | 서비스 대상 데이터의 수집 및 분석을 통한 보유 목록 현행화 | manual | 15d | 2016-08-29 | 2016-09-16 | start no earlier than 2016-08-29 |
| 41 | 4.2 | 보유데이터 현행화를 통한 서비스의 정확성 및 최신성 등의 데이터 품질 문제점 도출 및 개선방안 수립 | manual | 15d | 2016-08-29 | 2016-09-16 | start no earlier than 2016-08-29 |
| 42 | 5 | **데이터, 콘텐츠 별 권한 분류 등 메타데이터 정의** |  | 1d | 2016-08-12 | 2016-08-12 |  |
| 43 | 5.1 | 데이터, 콘텐츠 별 권한분류를 통한 시각화 서비스 대상 정의 | manual | 15d | 2016-08-29 | 2016-09-16 | start no earlier than 2016-08-29 |
| 44 | 5.2 | 데이터, 콘텐츠 별 관련 데이터셋 및 연계 정보 상세 조사 | manual | 15d | 2016-08-29 | 2016-09-16 | start no earlier than 2016-08-29 |
| 45 | 5.3 | 데이터, 콘텐츠 별 권한에 따른 시각화 서비스 도출 | manual | 15d | 2016-08-29 | 2016-09-16 | start no earlier than 2016-08-29 |
| 46 | 6 | **주요지표 선정 및 통합·연계·활용 방안 수립** |  | 1d | 2016-08-12 | 2016-08-12 |  |
| 47 | 6.1 | 주요 시정데이터 지표 별 유형 분석 | manual | 15d | 2016-08-29 | 2016-09-16 |  |
| 48 | 6.2 | 주요 지표 관련 데이터셋 및 연계 정보 상세 조사 | manual | 15d | 2016-08-29 | 2016-09-16 |  |
| 49 | 6.3 | 주요 지표 시각화 유형 정의 | manual | 15d | 2016-08-29 | 2016-09-16 |  |
| 50 | 7 | **DB 유형별 상세조사** |  | 1d | 2016-08-12 | 2016-08-12 |  |
| 51 | 7.1 | 사업지표 데이터 대상 수집 방안 도출 | manual | 13d | 2016-08-31 | 2016-09-16 |  |
| 52 | 7.2 | 도시현황 데이터 대상 수집 방안 도출 | manual | 13d | 2016-08-31 | 2016-09-16 |  |
| 53 | 7.3 | 여론동향 데이터 대상 수집 방안 도출 | manual | 13d | 2016-08-31 | 2016-09-16 |  |
| 54 | 7.4 | 공간정보 데이터 대상 수집 방안 도출 | manual | 13d | 2016-08-31 | 2016-09-16 |  |
| 55 | 7.5 | CCTV 영상데이터 대상 수집 방안 도출 | manual | 13d | 2016-08-31 | 2016-09-16 |  |
| 56 | 7.6 | 과제별보고 | milestone, manual | 0d | 2016-09-19 | 2016-09-19 |  |

| ID | WBS | Task | Type | Duration | Start | Finish | Predecessors | Constraint |
| --- | --- | --- | --- | --- | --- | --- | --- | --- |
| 57 | 8 | **데이터연계개발** |  | 1d | 2016-08-12 | 2016-08-12 |  |  |
| 58 | 8.1 | 사업지표데이터 | manual | 10d | 2016-09-19 | 2016-09-30 |  |  |
| 59 | 8.2 | 도시현황데이터 | manual | 10d? | 2016-09-19 | 2016-09-30 |  |  |
| 60 | 8.3 | 여론동향데이터 | manual | 10d? | 2016-09-19 | 2016-09-30 |  |  |
| 61 | 8.4 | 공간정보데이터 | manual | 10d? | 2016-09-19 | 2016-09-30 |  |  |
| 62 | 8.5 | CCTV영상데이터 | manual | 10d? | 2016-09-19 | 2016-09-30 |  |  |
| 63 | 8.6 | 기타데이터 | manual | 10d? | 2016-09-19 | 2016-09-30 |  |  |
| 64 | 9 | **시스템/프레임워크 설계** |  | 1d | 2016-08-12 | 2016-08-12 |  |  |
| 65 | 9.1 | 시스템 아키텍처 설계 | manual | 9d | 2016-08-16 | 2016-08-26 |  |  |
| 66 | 9.2 | 어플리케이션 아키텍처 설계 | manual | 9d | 2016-08-16 | 2016-08-26 |  |  |
| 67 | 9.3 | DB모델 설계 | manual | 10d | 2016-09-05 | 2016-09-16 |  |  |
| 68 | 9.4 | 프레임워크 설계 | manual | 11d | 2016-08-26 | 2016-09-09 |  |  |
| 69 | 9.5 | 공통 모듈 설계 | manual | 11d | 2016-08-26 | 2016-09-09 |  |  |
| 70 | 9.6 | 프레임워크 및 공통 모듈 개발 | manual | 5d | 2016-09-12 | 2016-09-16 | 69 |  |
| 71 | 9.7 | 개발자 내부 개발 가이드 전파 교육 | manual | 3d | 2016-09-19 | 2016-09-21 | 70 |  |
| 72 | 9.8 | 과제별보고 | milestone, manual | 0d | 2016-09-22 | 2016-09-22 |  |  |
| 73 | 10 | **디지털시장실 - 피드백(알람, 메시징) 기능** |  | 1d | 2016-08-12 | 2016-08-12 |  |  |
| 74 | 10.1 | 하이 서울 메신저 분석 | manual | 5d | 2016-09-19 | 2016-09-23 |  |  |
| 75 | 10.2 | 하이 서울 메신저 API 연계 방안 도출 | manual | 3d | 2016-09-23 | 2016-09-27 |  |  |
| 76 | 10.3 | 하이 서울 메신저 연계 개발 | manual | 13d | 2016-09-28 | 2016-10-14 |  |  |
| 77 | 10.4 | 지표 이상 징후 발생 설정 개발 | manual | 10d | 2016-10-17 | 2016-10-28 |  |  |
| 78 | 10.5 | 지표 이상 징후 발생 알림 개발 | manual | 10d | 2016-10-17 | 2016-10-28 |  |  |
| 79 | 10.6 | 피드백 개발 | manual | 10d | 2016-10-17 | 2016-10-28 |  |  |
| 80 | 10.7 | 기능테스트 | manual | 3d | 2016-10-31 | 2016-11-02 |  | start no earlier than 2016-10-31 |
| 81 | 10.8 | 과제별보고 | milestone, manual | 0d | 2016-11-03 | 2016-11-03 |  |  |

| ID | WBS | Task | Type | Duration | Start | Finish |
| --- | --- | --- | --- | --- | --- | --- |
| 82 | 11 | **디지털시장실- 주요지표서비스** |  | 1d | 2016-08-12 | 2016-08-12 |
| 83 | 11.1 | 지표별 시각화 디자인 | manual | 10d | 2016-09-12 | 2016-09-23 |
| 84 | 11.2 | 지표별 시각화 요소 개발 | manual | 50d | 2016-09-22 | 2016-11-30 |
| 85 | 11.3 | 대시보드 내에서 시각화 요소 연계 | manual | 50d | 2016-09-22 | 2016-11-30 |
| 86 | 11.4 | 기능테스트 | manual | 5d | 2016-12-01 | 2016-12-07 |
| 87 | 11.5 | 과제별보고 | milestone, manual | 0d | 2016-12-08 | 2016-12-08 |
| 88 | 12 | **디지털시장실- 정책성과서비스** |  | 1d | 2016-08-12 | 2016-08-12 |
| 89 | 12.1 | 지표별 시각화 디자인 | manual | 10d | 2016-09-12 | 2016-09-23 |
| 90 | 12.2 | 지표별 시각화 요소 개발 | manual | 50d | 2016-09-22 | 2016-11-30 |
| 91 | 12.3 | 대시보드 내에서 시각화 요소 연계 | manual | 50d | 2016-09-22 | 2016-11-30 |
| 92 | 12.4 | 기능테스트 | manual | 5d | 2016-12-01 | 2016-12-07 |
| 93 | 12.5 | 과제별보고 | milestone, manual | 0d | 2016-12-08 | 2016-12-08 |
| 94 | 13 | **디지털시장실- 주요시책서비스** |  | 1d | 2016-08-12 | 2016-08-12 |
| 95 | 13.1 | 지표별 시각화 디자인 | manual | 10d | 2016-09-12 | 2016-09-23 |
| 96 | 13.2 | 지표별 시각화 요소 개발 | manual | 50d | 2016-09-22 | 2016-11-30 |
| 97 | 13.3 | 대시보드 내에서 시각화 요소 연계 | manual | 50d | 2016-09-22 | 2016-11-30 |
| 98 | 13.4 | 기능테스트 | manual | 5d | 2016-12-01 | 2016-12-07 |
| 99 | 13.5 | 과제별보고 | milestone, manual | 0d | 2016-12-08 | 2016-12-08 |
| 100 | 14 | **디지털시장실- 실시간 도시현황서비스** |  | 1d | 2016-08-12 | 2016-08-12 |
| 101 | 14.1 | 지표별 시각화 디자인 | manual | 10d | 2016-09-12 | 2016-09-23 |
| 102 | 14.2 | 지표별 시각화 요소 개발 | manual | 50d | 2016-09-22 | 2016-11-30 |
| 103 | 14.3 | 대시보드 내에서 시각화 요소 연계 | manual | 50d | 2016-09-22 | 2016-11-30 |
| 104 | 14.4 | 기능테스트 | manual | 5d | 2016-12-01 | 2016-12-07 |
| 105 | 14.5 | 과제별보고 | milestone, manual | 0d | 2016-12-08 | 2016-12-08 |

| ID | WBS | Task | Type | Duration | Start | Finish |
| --- | --- | --- | --- | --- | --- | --- |
| 106 | 15 | **디지털시장실- 실시간 모니터링** |  | 1d | 2016-08-12 | 2016-08-12 |
| 107 | 15.1 | CCTV 영상데이터 수집 | manual | 10d | 2016-09-05 | 2016-09-16 |
| 108 | 15.2 | CCTV 영상데이터 연계 API 개발 | manual | 10d | 2016-09-19 | 2016-09-30 |
| 109 | 15.3 | CCTV 영상데이터 통합 UI개발 | manual | 20d | 2016-10-03 | 2016-10-28 |
| 110 | 15.4 | 지도서비스와 CCTV위치정보연동개발 | manual | 15d | 2016-10-31 | 2016-11-18 |
| 111 | 15.5 | 기능테스트 | manual | 5d | 2016-11-21 | 2016-11-25 |
| 112 | 15.6 | 과제별보고 | milestone, manual | 0d | 2016-11-28 | 2016-11-28 |
| 113 | 16 | **디지털시장실- 여론동향** |  | 1d | 2016-08-12 | 2016-08-12 |
| 114 | 16.1 | 디지털 여론동향 시각화 요소 디자인 | manual | 10d | 2016-09-12 | 2016-09-23 |
| 115 | 16.2 | 디지털 여론동향 자료 수집 연계 개발 | manual | 27d | 2016-09-22 | 2016-10-28 |
| 116 | 16.3 | 여론동향 시각화 요소 개발 | manual | 23d | 2016-10-31 | 2016-11-30 |
| 117 | 16.4 | 기능테스트 | manual | 5d | 2016-12-01 | 2016-12-07 |
| 118 | 16.5 | 과제별보고 | milestone, manual | 0d | 2016-12-08 | 2016-12-08 |
| 119 | 17 | **관리프로그램-메타관리** |  | 1d | 2016-08-12 | 2016-08-12 |
| 120 | 17.1 | 유형설정관리개발 | manual | 20d | 2016-09-19 | 2016-10-14 |
| 121 | 17.2 | 연계데이터조회개발 | manual | 20d | 2016-09-19 | 2016-10-14 |
| 122 | 17.3 | 데이터미리보기개발 | manual | 20d | 2016-09-19 | 2016-10-14 |
| 123 | 17.4 | 기능테스트 | manual | 5d | 2016-10-17 | 2016-10-21 |
| 124 | 17.5 | 과제별보고 | milestone, manual | 0d | 2016-10-24 | 2016-10-24 |
| 125 | 18 | **관리프로그램-지표관리** |  | 1d | 2016-08-12 | 2016-08-12 |
| 126 | 18.1 | 지표항목관리개발 | manual | 30d | 2016-09-19 | 2016-10-28 |
| 127 | 18.2 | 지표값관리개발 | manual | 30d | 2016-09-19 | 2016-10-28 |
| 128 | 18.3 | 지표시각화관리개발 | manual | 30d | 2016-09-19 | 2016-10-28 |
| 129 | 18.4 | 기능테스트 | manual | 5d | 2016-10-17 | 2016-10-21 |
| 130 | 18.5 | 과제별보고 | milestone, manual | 0d | 2016-10-24 | 2016-10-24 |

| ID | WBS | Task | Type | Duration | Start | Finish |
| --- | --- | --- | --- | --- | --- | --- |
| 131 | 19 | **관리프로그램-사고모니터링관리** |  | 1d | 2016-08-12 | 2016-08-12 |
| 132 | 19.1 | 사고현황 관리 | manual | 10d | 2016-10-24 | 2016-11-04 |
| 133 | 19.2 | 여론동향관리 | manual | 10d | 2016-10-24 | 2016-11-04 |
| 134 | 19.3 | Q&A관리개발 | manual | 10d | 2016-11-07 | 2016-11-18 |
| 135 | 19.4 | 피드백서비스관리개발 | manual | 8d | 2016-11-21 | 2016-11-30 |
| 136 | 19.5 | 기능테스트 | manual | 5d | 2016-12-01 | 2016-12-07 |
| 137 | 19.6 | 과제별보고 | milestone, manual | 0d | 2016-12-08 | 2016-12-08 |
| 138 | 20 | **관리프로그램-계정관리개발** |  | 1d | 2016-08-12 | 2016-08-12 |
| 139 | 20.1 | 관리자계정관리개발 | manual | 20d | 2016-10-24 | 2016-11-18 |
| 140 | 20.2 | 권한관리개발 | manual | 20d | 2016-10-24 | 2016-11-18 |
| 141 | 20.3 | 기능테스트 | manual | 5d | 2016-11-21 | 2016-11-25 |
| 142 | 20.4 | 과제별보고 | manual | 1d | 2016-11-28 | 2016-11-28 |
| 143 | 21 | **관리프로그램-데이터연동관리** |  | 1d | 2016-08-12 | 2016-08-12 |
| 144 | 21.1 | 데이터연동현황조회개발 | manual | 20d | 2016-10-03 | 2016-10-28 |
| 145 | 21.2 | 데이터연동관리기능개발 | manual | 20d | 2016-10-03 | 2016-10-28 |
| 146 | 21.3 | 성공/실패내역조회개발 | manual | 10d | 2016-10-31 | 2016-11-11 |
| 147 | 21.4 | 기능테스트 | manual | 5d | 2016-11-14 | 2016-11-18 |
